# Sahassa Project Template

Schedule from MS Project, 2019-03-28 to 2019-09-25, costs in Rp.

## Calendars

- Standard: Mon-Fri 08:00-12:00, 13:00-17:00; Sat-Sun off. Exceptions (off unless hours are given): 2019-04-03 (isra miraj 2019), 2019-04-19 (wafat isa almasih), 2019-05-01 to 2019-05-05 (buruh 2019), 2019-05-19 (waisak 2019), 2019-05-30 (kenaikan isa almasih), 2019-06-01 (lahir pancasila 2019), 2019-06-05 to 2019-06-06 (idul fitri 2019), 2019-08-12 (idul adha 2019), 2019-08-17 (kemerdekaan 2019), 2019-09-01 (tahun baru islam 2019).

## Resources

| Resource | Rate |
| --- | --- |
| BA | 437500 |
| TPL | 375000 |
| Quality Assurance | 250000 |
| Documenter | 218750 |
| Developer 1 | 312500 |
| Developer 2 | 312500 |
| Developer 3 | 312500 |
| TL |  |

## Schedule

| ID | WBS | Task | Type | Duration | Start | Finish | Predecessors | Total slack | Free slack | Constraint | Resources | Work | Cost |
| --- | --- | --- | --- | --- | --- | --- | --- | --- | --- | --- | --- | --- | --- |
| 1 | 1 | **AML PG NRG** |  | 120.5d | 2019-03-28 | 2019-09-25 |  | 0d |  |  |  | 1012h | 343,750,000 |
| 2 | 1.1 | **Requirement Gathering** |  | 6d | 2019-03-28 | 2019-04-05 |  | 0d |  |  |  | 40h | 17,500,000 |
| 3 | 1.1.1 | Kick Off Meeting |  | 1d | 2019-03-28 | 2019-03-28 |  | 5d | 0d | start no earlier than 2019-03-28 | BA | 8h | 3,500,000 |
| 4 | 1.1.2 | Meeting Agenda + Signature (Output Document) | milestone | 0d | 2019-03-28 | 2019-03-28 | 3 | 5d | 0d |  |  |  |  |
| 5 | 1.1.3 | Project Scope (Output Document) | milestone | 0d | 2019-03-28 | 2019-03-28 | 4 | 5d | 0d |  |  |  |  |
| 6 | 1.1.4 | Project Schedule (Output Document) | milestone | 0d | 2019-03-28 | 2019-03-28 | 5 | 5d | 0d |  |  |  |  |
| 7 | 1.1.5 | Team Structure (Output Document) | milestone | 0d | 2019-03-28 | 2019-03-28 | 6 | 5d |  |  |  |  |  |
| 8 | 1.1.6 | User Requirement Interview |  | 4d | 2019-04-01 | 2019-04-05 |  | 0d |  | finish no earlier than 2019-04-05 | BA | 32h | 14,000,000 |
| 9 | 1.2 | **Analisa & Design** |  | 10d | 2019-04-08 | 2019-04-22 | 2 | 0d |  |  |  | 80h | 24,500,000 |
| 10 | 1.2.1 | Update Design FSD |  | 4d | 2019-04-08 | 2019-04-11 | 2 | 0d |  |  | BA | 32h | 14,000,000 |
| 11 | 1.2.2 | Update Design TSD |  | 3d | 2019-04-12 | 2019-04-16 | 10 | 0d |  |  | TL | 24h |  |
| 12 | 1.2.3 | FSD & TSD (Output Document) | milestone | 0d | 2019-04-16 | 2019-04-16 | 11 | 0d |  |  |  |  |  |
| 13 | 1.2.4 | Meeting & Review |  | 1d | 2019-04-17 | 2019-04-17 | 12 | 0d |  |  | BA | 8h | 3,500,000 |
| 14 | 1.2.5 | Re-design FSD & TSD |  | 2d | 2019-04-18 | 2019-04-22 | 13 | 0d |  |  | BA | 16h | 7,000,000 |
| 15 | 1.2.6 | Revised & Sign off FSD & TSD (Output Document) | milestone | 0d | 2019-04-22 | 2019-04-22 | 14 | 0d |  |  |  |  |  |
| 16 | 1.3 | **Development** |  | 50d | 2019-04-23 | 2019-07-09 | 9 | 0d |  |  |  | 408h | 127,000,000 |
| 17 | 1.3.1 | **Parameter** |  | 3d | 2019-04-23 | 2019-04-25 |  | 0d |  |  |  | 24h | 7,500,000 |
| 18 | 1.3.1.1 | Parameter Screening Setting |  | 1d | 2019-04-23 | 2019-04-23 |  | 0d |  |  | Developer 1 | 8h | 2,500,000 |
| 19 | 1.3.1.2 | Parameter White List |  | 1d | 2019-04-24 | 2019-04-24 | 18 | 0d |  |  | Developer 1 | 8h | 2,500,000 |
| 20 | 1.3.1.3 | Parameter Reject NRG Reason |  | 1d | 2019-04-25 | 2019-04-25 | 19 | 0d |  |  | Developer 1 | 8h | 2,500,000 |
| 21 | 1.3.2 | **Screening PG** |  | 19d | 2019-04-26 | 2019-05-27 | 17 | 0d |  |  |  | 152h | 47,500,000 |
| 22 | 1.3.2.1 | API Screening PG Web Nama Pengirim |  | 5d | 2019-04-26 | 2019-05-07 |  | 0d |  |  | Developer 1 | 40h | 12,500,000 |
| 23 | 1.3.2.2 | API Screening PG Web Nama Penerima |  | 5d | 2019-05-08 | 2019-05-14 | 22 | 0d |  |  | Developer 1 | 40h | 12,500,000 |
| 24 | 1.3.2.3 | API Screening PG Web Remark |  | 5d | 2019-05-15 | 2019-05-21 | 23 | 0d |  |  | Developer 1 | 40h | 12,500,000 |
| 25 | 1.3.2.4 | API Screening PG Audit Trail |  | 4d | 2019-05-22 | 2019-05-27 | 24 | 0d |  |  | Developer 1 | 32h | 10,000,000 |

| ID | WBS | Task | Type | Duration | Start | Finish | Predecessors | Total slack | Free slack | Resources | Work | Cost |
| --- | --- | --- | --- | --- | --- | --- | --- | --- | --- | --- | --- | --- |
| 26 | 1.3.3 | **Scheduler NRG** |  | 18d | 2019-05-28 | 2019-06-25 | 21 | 0d |  |  | 144h | 45,000,000 |
| 27 | 1.3.3.1 | Scehduler Get File From SFTP |  | 5d | 2019-05-28 | 2019-06-04 |  | 0d |  | Developer 1 | 40h | 12,500,000 |
| 28 | 1.3.3.2 | Email Notification Item Kena Hit |  | 3d | 2019-06-07 | 2019-06-11 | 27 | 0d |  | Developer 1 | 24h | 7,500,000 |
| 29 | 1.3.3.3 | Email Notification File Corrupt |  | 2d | 2019-06-12 | 2019-06-13 | 28 | 0d |  | Developer 1 | 16h | 5,000,000 |
| 30 | 1.3.3.4 | Screening NRG File |  | 5d | 2019-06-14 | 2019-06-20 | 29 | 0d |  | Developer 1 | 40h | 12,500,000 |
| 31 | 1.3.3.5 | Upload Result to SFTP |  | 3d | 2019-06-21 | 2019-06-25 | 30 | 0d |  | Developer 1 | 24h | 7,500,000 |
| 32 | 1.3.3.6 | Audit Trail Screening NRG |  | 2d | 2019-05-28 | 2019-05-29 |  | 16d |  |  |  |  |
| 33 | 1.3.4 | **Reporting** |  | 10d | 2019-06-26 | 2019-07-09 | 26 | 0d |  |  | 88h | 27,000,000 |
| 34 | 1.3.4.1 | Report Accept Transaction |  | 5d | 2019-06-26 | 2019-07-02 |  | 0d |  | Developer 1 | 40h | 12,500,000 |
| 35 | 1.3.4.2 | Report Reject Transaction |  | 5d | 2019-07-03 | 2019-07-09 | 34 | 0d |  | Developer 1 | 40h | 12,500,000 |
| 36 | 1.3.4.3 | Unit Testing |  | 1d | 2019-06-26 | 2019-06-26 |  | 9d |  | Quality Assurance | 8h | 2,000,000 |
| 37 | 1.4 | **Build Aplication Installer** |  | 0d | 2019-07-09 | 2019-07-09 | 16 | 0d |  |  |  |  |
| 38 | 1.4.1 | Build Aplication Installer | milestone | 0d | 2019-07-09 | 2019-07-09 |  | 0d |  |  |  |  |
| 39 | 1.4.2 | Aplication Installer (Output Installer) | milestone | 0d | 2019-07-09 | 2019-07-09 |  | 54.5d |  |  |  |  |
| 40 | 1.5 | **Internal Test** |  | 5d | 2019-07-10 | 2019-07-16 | 38 | 0d |  |  | 88h | 28,750,000 |
| 41 | 1.5.1 | Internal Test Cycle 1 |  | 2d | 2019-07-10 | 2019-07-11 |  | 0d |  | BA; Quality Assurance | 32h | 11,000,000 |
| 42 | 1.5.2 | Internal Test Evidence Document 1 (Output Document) | milestone | 0d | 2019-07-11 | 2019-07-11 | 41 | 0d |  |  |  |  |
| 43 | 1.5.3 | Fixing Anomaly & Re-build Application Installer 1 |  | 1d | 2019-07-12 | 2019-07-12 | 42 | 0d |  | TPL; Developer 1 | 16h | 5,500,000 |
| 44 | 1.5.4 | Internal Test Cycle 2 |  | 1d | 2019-07-15 | 2019-07-15 | 43 | 0d |  | BA; Quality Assurance | 16h | 5,500,000 |
| 45 | 1.5.5 | Internal Test Evidence Document 2 (Output Document) | milestone | 0d | 2019-07-15 | 2019-07-15 | 44 | 0d |  |  |  |  |
| 46 | 1.5.6 | Release Notes Sign Off & Application Installer to Customer (Output Document & Installer) |  | 1d | 2019-07-16 | 2019-07-16 | 45 | 0d |  | Quality Assurance; TPL | 16h | 5,000,000 |
| 47 | 1.5.7 | **Document Construction** |  | 1d | 2019-07-10 | 2019-07-10 |  | 4d |  |  | 8h | 1,750,000 |
| 48 | 1.5.7.1 | Update Installation Guides, Backup & Recovery |  | 1d | 2019-07-10 | 2019-07-10 |  | 4d | 0d | Documenter | 8h | 1,750,000 |
| 49 | 1.5.7.2 | Installation Guides, Backup & Recovery (Output Document) | milestone | 0d | 2019-07-10 | 2019-07-10 | 48 | 4d |  | Documenter |  |  |

| ID | WBS | Task | Type | Duration | Start | Finish | Predecessors | Total slack | Free slack | Constraint | Resources | Work | Cost |
| --- | --- | --- | --- | --- | --- | --- | --- | --- | --- | --- | --- | --- | --- |
| 50 | 1.6 | **Installation on Testing Environment** |  | 0.5d | 2019-07-17 | 2019-07-17 | 40 | 0d |  |  |  | 4h | 1,500,000 |
| 51 | 1.6.1 | Install Apps & DB |  | 0.5d | 2019-07-17 | 2019-07-17 |  | 0d |  |  | TPL | 4h | 1,500,000 |
| 52 | 1.7 | **Testing** |  | 42d | 2019-07-17 | 2019-09-16 | 50 | 0d |  |  |  | 336h | 126,000,000 |
| 53 | 1.7.1 | SIT & UAT Script Document (Output Document) | milestone | 0d | 2019-07-17 | 2019-07-17 |  | 42d |  |  |  |  |  |
| 54 | 1.7.2 | **Internal Test Dev Team IT** |  | 14d | 2019-07-17 | 2019-08-06 | 50 | 0d |  |  |  | 112h | 42,000,000 |
| 55 | 1.7.2.1 | Perform SIT Activity |  | 10d | 2019-07-17 | 2019-07-31 |  | 0d |  |  | TPL | 80h | 30,000,000 |
| 56 | 1.7.2.2 | Fixed Anomaly |  | 2d | 2019-07-31 | 2019-08-02 | 55 | 0d |  |  | TPL | 16h | 6,000,000 |
| 57 | 1.7.2.3 | Retest |  | 2d | 2019-08-02 | 2019-08-06 | 56 | 0d |  |  | TPL | 16h | 6,000,000 |
| 58 | 1.7.2.4 | SIT Result (Output Document) | milestone | 0d | 2019-08-06 | 2019-08-06 | 57 | 0d |  |  |  |  |  |
| 59 | 1.7.2.5 | SIT Sign-off (Output Document) | milestone | 0d | 2019-08-06 | 2019-08-06 | 58 | 0d |  |  |  |  |  |
| 60 | 1.7.3 | **SIT** |  | 14d | 2019-08-06 | 2019-08-27 | 54 | 0d |  |  |  | 112h | 42,000,000 |
| 61 | 1.7.3.1 | Perform SIT Activity |  | 10d | 2019-08-06 | 2019-08-21 |  | 0d |  |  | TPL | 80h | 30,000,000 |
| 62 | 1.7.3.2 | Fixed Anomaly |  | 2d | 2019-08-21 | 2019-08-23 | 61 | 0d |  |  | TPL | 16h | 6,000,000 |
| 63 | 1.7.3.3 | Retest |  | 2d | 2019-08-23 | 2019-08-27 | 62 | 0d |  |  | TPL | 16h | 6,000,000 |
| 64 | 1.7.3.4 | SIT Result (Output Document) | milestone | 0d | 2019-08-27 | 2019-08-27 | 63 | 0d |  |  |  |  |  |
| 65 | 1.7.3.5 | SIT Sign-off (Output Document) | milestone | 0d | 2019-08-27 | 2019-08-27 | 64 | 0d |  |  |  |  |  |
| 66 | 1.7.4 | **UAT** |  | 14d | 2019-08-27 | 2019-09-16 | 60 | 0d |  |  |  | 112h | 42,000,000 |
| 67 | 1.7.4.1 | Perform UAT Activity |  | 10d | 2019-08-27 | 2019-09-10 |  | 0d |  |  | TPL | 80h | 30,000,000 |
| 68 | 1.7.4.2 | Fixed Anomaly |  | 2d | 2019-09-10 | 2019-09-12 | 67 | 0d |  |  | TPL | 16h | 6,000,000 |
| 69 | 1.7.4.3 | Retest |  | 2d | 2019-09-12 | 2019-09-16 | 68 | 0d |  |  | TPL | 16h | 6,000,000 |
| 70 | 1.7.4.4 | UAT Result (Output Document) | milestone | 0d | 2019-09-16 | 2019-09-16 | 69 | 0d |  |  |  |  |  |
| 71 | 1.7.4.5 | UAT Sign-off (Output Document) | milestone | 0d | 2019-09-16 | 2019-09-16 | 70 | 0d |  |  |  |  |  |
| 72 | 1.8 | **Implementation** |  | 2d | 2019-09-16 | 2019-09-18 | 52 | 0d |  |  |  | 16h | 6,000,000 |
| 73 | 1.8.1 | Update Installation Document |  | 1d | 2019-09-16 | 2019-09-17 |  | 0d |  |  | TPL | 8h | 3,000,000 |
| 74 | 1.8.2 | Installation |  | 1d | 2019-09-17 | 2019-09-18 | 73 | 0d |  |  | TPL | 8h | 3,000,000 |
| 75 | 1.8.3 | Implementation Sign Off (Output Document) | milestone | 0d | 2019-09-16 | 2019-09-16 |  | 7d |  |  |  |  |  |
| 76 | 1.9 | Live !!! (Application Delivery) | milestone | 0d | 2019-09-18 | 2019-09-18 | 74 | 0d |  |  |  |  |  |
| 77 | 1.10 | Support Onsite After Promote |  | 5d | 2019-09-18 | 2019-09-25 | 76 | 0d |  |  | Developer 1 | 40h | 12,500,000 |
| 78 | 2 | PIR & Exit Meeting (2 weeks after Post Implementation Support) (OPTIONAL) | milestone | 0d | 2019-09-18 | 2019-09-18 | 76 | 5d | 0d | start no earlier than 2012-08-15 |  |  |  |
| 79 | 3 | PIR Sign Off (Output Document) | milestone | 0d | 2019-09-18 | 2019-09-18 | 78 | 5d | 0d |  |  |  |  |
| 80 | 4 | Project Closed Sign Off (Output Document) | milestone | 0d | 2019-09-18 | 2019-09-18 | 79 | 5d |  |  |  |  |  |
